# Gant - Proyecto

Schedule from MS Project, 2025-08-11 to 2025-11-17.

## Calendars

- Estándar: Mon-Fri 09:00-13:00, 15:00-19:00; Sat-Sun off.
- 7 dias: Mon-Sun 08:00-17:00.

## Schedule

| ID | WBS | Task | Type | Duration | Start | Finish | Predecessors | Total slack | Constraint | Calendar | Responsable |
| --- | --- | --- | --- | --- | --- | --- | --- | --- | --- | --- | --- |
| 1 | 1 | **Proyecto Final** |  | 111d | 2025-08-11 | 2025-11-17 |  | 0d |  | 7 dias |  |
| 2 | 1.1 | Inicio de cursada | milestone | 0d | 2025-08-11 | 2025-08-11 |  | 0d | start no earlier than 2025-08-11 | 7 dias |  |
| 3 | 1.2 | Selección de proyecto, estudio de viabilidad y definición del alcance |  | 4d | 2025-08-11 | 2025-08-14 | 2 | 0d |  | 7 dias | CM, IF, EY |
| 4 | 1.3 | Selección y compra de materiales |  | 14d | 2025-08-14 | 2025-08-27 | 3 | 0d |  | 7 dias | CM, IF, EY |
| 5 | 1.4 | Entrega de Propuesta Inicial | milestone | 0d | 2025-08-25 | 2025-08-25 | 2FS+16d | 95d |  | 7 dias | CM, IF, EY |
| 6 | 1.5 | Armado y puesta en funcionamiento de Dron |  | 28d | 2025-08-14 | 2025-09-08 | 4FS-14d | 0d |  | 7 dias | IF |
| 7 | 1.6 | Desarrollo de pilotaje autonomo GPS |  | 21d | 2025-09-08 | 2025-09-27 | 6 | 0d |  | 7 dias | IF |
| 8 | 1.7 | Armado y programacion de sistema de deteccion IR |  | 21d | 2025-08-18 | 2025-09-05 | 4FS-10d | 0d |  | 7 dias | EY |
| 9 | 1.8 | Armado y programacion de sistema de camara RGB |  | 21d | 2025-08-18 | 2025-09-05 | 4FS-10d | 0d |  | 7 dias | CM |
| 10 | 1.9 | Integracion de IR + RGB |  | 10d | 2025-09-05 | 2025-09-14 | 8, 9 | 0d |  | 7 dias | EY, CM |
| 11 | 1.10 | Programacion de sistema de comunicación IR+RGB+Base |  | 14d | 2025-09-14 | 2025-09-27 | 10 | 0d |  | 7 dias | EY, CM |
| 12 | 1.11 | Integracion de Dron y Sistema de Detección |  | 14d | 2025-09-27 | 2025-10-09 | 11, 7 | 0d |  | 7 dias | CM, IF, EY |
| 13 | 1.12 | Armado y programacion de compartimento portaobjetos |  | 10d | 2025-09-05 | 2025-09-14 | 8 | 28d |  | 7 dias | EY, CM |
| 14 | 1.13 | Integracion de Dron y Portaobjetos |  | 14d | 2025-10-09 | 2025-10-22 | 12, 13 | 0d |  | 7 dias | IF |
| 15 | 1.14 | Etapa de pruebas |  | 25d | 2025-10-22 | 2025-11-13 | 14 | 0d |  | 7 dias | CM, IF, EY |
| 16 | 1.15 | Entrega final | milestone | 0d | 2025-11-17 | 2025-11-17 | 15FS+5d | 0d |  | 7 dias | CM, IF, EY |
